# reality

Schedule from MS Project XML, 2026-04-30 to 2027-02-02.

## Calendars

- Standard: Mon-Fri 08:00-12:00, 13:00-17:00; Sat-Sun off.

## Resources

| Resource |
| --- |
| General Contractor |
| Trade Partner |

## Schedule

| ID | WBS | Task | Type | Duration | Start | Finish | Predecessors | Total slack | Free slack | Resources | Work | 3 Week Look-Ahead | 6 Week Look-Ahead | 12 Week Look-Ahead | Field |
| --- | --- | --- | --- | --- | --- | --- | --- | --- | --- | --- | --- | --- | --- | --- | --- |
| 2 | 1 | "Happy Path" | manual | 1d? | 2026-04-30 | 2026-04-30 |  |  |  |  |  | 1 | 1 | 1 | 1 |
| 3 | 2 | **Structural Steel Procurement** |  | 115d | 2026-04-30 | 2026-10-07 |  | 84d |  |  |  | 1 | 1 | 1 | 1 |
| 4 | 2.1 | Buyout - Submittal - Approval |  | 50d | 2026-04-30 | 2026-07-08 |  | 84d | 0d |  |  | 1 | 1 | 1 | 1 |
| 5 | 2.2 | Fabrication Starts Here | milestone | 0d | 2026-07-08 | 2026-07-08 | 4 | 84d | 0d |  |  | 1 | 1 | 1 | 1 |
| 6 | 2.3 | Fabrication - Delivery |  | 50d | 2026-07-09 | 2026-09-16 | 5 | 84d | 0d |  |  | 1 | 1 | 1 | 1 |
| 7 | 2.4 | Buffer - For Good Measure |  | 15d | 2026-09-17 | 2026-10-07 | 6 | 84d | 0d |  |  | 1 | 1 | 1 | 1 |
| 8 | 2.5 | False Hope Delivery Date - 6/10/24 | milestone | 0d | 2026-10-07 | 2026-10-07 | 7 | 84d |  |  |  | 1 | 1 | 1 | 1 |
| 14 | 2.6 | What Really Happens | manual | 1d? | 2026-04-30 | 2026-04-30 |  |  |  |  |  | 1 | 1 | 1 | 1 |
| 15 | 3 | **Structural Steel Procurement** |  | 199d | 2026-04-30 | 2027-02-02 |  | 0d |  |  | 416h | 1 | 1 | 1 | 1 |
| 16 | 3.1 | Issue Contract/PO |  | 20d | 2026-04-30 | 2026-05-27 |  | 2d | 0d | General Contractor | 160h | 1 | 1 | 1 | 1 |
| 17 | 3.2 | Steel Contractor Has Questions | milestone | 0d | 2026-05-27 | 2026-05-27 | 16 | 2d | 0d | Trade Partner |  | 1 | 1 | 1 | 1 |
| 18 | 3.3 | Forced Shop Drawing Start - Have to Push to Meet Deadlines |  | 30d | 2026-05-28 | 2026-07-08 | 17 | 2d | 0d | Trade Partner | 240h | 1 | 1 | 1 | 1 |
| 19 | 3.4 | Original Start of Fabrication Date | milestone, manual | 0d | 2026-07-08 | 2026-07-08 |  |  |  |  |  | 1 | 1 | 1 | 1 |
| 20 | 3.5 | GC Receives Submittal from Trade Partner |  | 1d | 2026-07-09 | 2026-07-09 | 18 | 2d | 0d | General Contractor | 8h | 1 | 1 | 1 | 1 |
| 21 | 3.6 | Expedited GC Review |  | 1d | 2026-07-10 | 2026-07-10 | 20 | 2d | 0d | General Contractor | 8h | 1 | 1 | 1 | 1 |
| 22 | 3.7 | Abbreviated Parallel Multidisciplinary Review |  | 1d | 2026-07-20 | 2026-07-20 | 21FS+5d | 2d | 0d |  |  | 1 | 1 | 1 | 1 |
| 23 | 3.8 | GC Submits to Structural Eng. W/ Request to Expedite Review |  | 1d | 2026-07-21 | 2026-07-21 | 22 | 2d | 0d |  |  | 1 | 1 | 1 | 1 |
| 24 | 3.9 | Reviewer/Approver Review |  | 15d | 2026-07-22 | 2026-08-11 | 23 | 2d | 0d |  |  | 1 | 1 | 1 | 1 |
| 25 | 3.10 | Revise & Resubmit Response |  | 1d | 2026-08-12 | 2026-08-12 | 24 | 2d | 0d |  |  | 1 | 1 | 1 | 1 |
| 26 | 3.11 | Steel Contractor Starts Revisions |  | 3d | 2026-08-13 | 2026-08-17 | 25 | 2d | 0d |  |  | 1 | 1 | 1 | 1 |
| 27 | 3.12 | Design Questions Pile Up |  | 17d | 2026-08-18 | 2026-09-09 | 26 | 2d | 0d |  |  | 1 | 1 | 1 | 1 |
| 28 | 3.13 | Steel Contractor Pushes to Finalize Submittal |  | 20d | 2026-09-10 | 2026-10-07 | 27 | 2d | 0d |  |  | 1 | 1 | 1 | 1 |
| 29 | 3.14 | Original Steel Onsite Date | milestone, manual | 0d | 2026-10-07 | 2026-10-07 |  |  |  |  |  | 1 | 1 | 1 | 1 |
| 30 | 3.15 | GC Resubmits to Reviewer/Approver |  | 1d | 2026-10-08 | 2026-10-08 | 28 | 2d | 0d |  |  | 1 | 1 | 1 | 1 |
| 31 | 3.16 | REV 1 Reviewer/Approver Review |  | 10d | 2026-10-09 | 2026-10-22 | 30 | 2d | 0d |  |  | 1 | 1 | 1 | 1 |
| 32 | 3.17 | REV 1 Submittal - Revise & Resubmit |  | 1d | 2026-10-23 | 2026-10-23 | 31 | 2d | 0d |  |  | 1 | 1 | 1 | 1 |
| 33 | 3.18 | Submitter Preps REV 2 Submittal |  | 10d | 2026-10-26 | 2026-11-06 | 32 | 2d | 0d |  |  | 1 | 1 | 1 | 1 |
| 34 | 3.19 | GC Resubmits to Reviewer/Approver |  | 1d | 2026-11-09 | 2026-11-09 | 33 | 2d | 0d |  |  | 1 | 1 | 1 | 1 |
| 35 | 3.20 | REV 2 Reviewer/Approver Review |  | 7d | 2026-11-10 | 2026-11-18 | 34 | 2d | 0d |  |  | 1 | 1 | 1 | 1 |
| 36 | 3.21 | REV 2 Submittal - Approved |  | 1d | 2026-11-19 | 2026-11-19 | 35 | 2d | 0d |  |  | 1 | 1 | 1 | 1 |
| 37 | 3.22 | Procurement Authorized |  | 1d | 2026-11-20 | 2026-11-20 | 36 | 2d | 0d |  |  | 1 | 1 | 1 | 1 |
| 38 | 3.23 | Material/Product & Fabrication Lead-Time |  | 45d | 2026-11-23 | 2027-01-22 | 37 | 2d | 0d |  |  | 1 | 1 | 1 | 1 |
| 39 | 3.24 | Trucking/Shipping |  | 5d | 2027-01-25 | 2027-01-29 | 38 | 2d | 0d |  |  | 1 | 1 | 1 | 1 |
| 40 | 3.25 | Material/Product Arrives Onsite | milestone | 0d | 2027-01-29 | 2027-01-29 | 39 | 2d |  |  |  | 1 | 1 | 1 | 1 |
| 48 | 3.26 | What Should Happen | manual | 1d? | 2026-04-30 | 2026-04-30 |  |  |  |  |  | 1 | 1 | 1 | 1 |

Notes:
- 2: The "Happy Path" is the procurement schedule that GC's commit to when they do not have clarity around constraints. This is simply one example of the many procurement items that make up every project.
- 4: Contractor assumes that they can complete buyout in 5 days and then move the steel subcontractor into the shop drawing process, 30 days, and then 15 days for review and approval.
- 5: Fabrication has to start today to meet the delivery date. Steel subcontractor blocks out their schedule for this project based on this date.
- 6: The steel subcontractor gave 45 days for the fabrication lead time and 5 days for delivery.
- 7: Nothing ever goes according to plan so the GC adds 15 days, 3-weeks, as a buffer. This seems very reasonable but the owner pushes back and doesn't believe the buffer is warranted.
- 8: Steel is required on site at an even earlier date, but the GC explains that this is the earliest they can get steel on site. The buffer question is raised again but the GC holds firm and thinks they are covered with 15 days.
- 14: This is the procurement reality that many General Contractors find themselves in when they commit to aggressive construction schedules that sidestep real constraints and logic, as with the "Happy Path" schedule above. They think they can force things through a process but they fail to understand that when they compress procurement logic, large amounts of risk is introduced into the system. They almost always lose.
- 16: Buyout takes 20 days, not the 5 assumed in the "Happy Plan"
- 17: The steel contractor has a list of questions before they can start shop drawings
- 18: To maintain schedule, the contractor instructs the steel contractor to push ahead and assures that questions will be answered later during, the review process.
- 19: This is the date that the steel contractor needed to start fabrication to guarantee delivery by 10/7/26. Fabrication start date quietly slips by.
- 20: Contractor receives shop drawings and gives a quick glance before submitting.
- 21: Contractor completes hasty review before sending off to the structural engineer.
- 22: Multidisciplinary reviews get skipped in favor of keeping the process moving quickly.
- 24: GC submits with a demand for expedited review explain that the start of fabrication has already been missed. The structural engineer has 15 days for review, contractually, but the GC asks for a 10-day turnaround. Due to already being overloaded by previous demands for expedited reviews, the engineer is experiencing overload already. Not knowing what is truly important, the engineer promises to do the best that he can and ends up taking the full 15 days.
- 25: Much to the frustration of the GC, the submittal, they assumed would be returned as "Approved", or, "Approved as Noted", get returned as "Revise and Resubmit". It is obvious that the structural engineer really drilled in on the first 10-15 pages of the shop drawings and red-marked many conflicts and mistakes. After those initial pages, though, the notations decreased. In reality, the engineer, feeling the pressure to get the drawings off their desk, and growing increasingly frustrated with the lack of coordination, simply sent the drawings back for the steel subcontractor to fix everything before submitting again. Now, the GC sends the drawings back to the subcontractor with a fevered demand for a quick turn-around.
- 26: The steel contractor dives back into the drawings, feeling the heat, and quickly re-discovers the initial questions about design that they had before they started the process. They go back to the GC and demand that the GC run interference and help ge the questions resolved before they start making revisions. Tempers flare. The fabrication start date is long gone and it's become painfully obvious to everyone that the steel is going to be really late.
- 27: The steel contractor submits a lengthy list of RFI's and the GC quickly dumps them onto the design team. The Architect is involved because architecture directly interfaces with the structural steel. It turns out that the missing design for several of the rooms in the house needs to be completed before the Architect can comment on structural issues. The decision is made to push ahead and carefully plan the field work to match the steel, when it eventually shows up. The GC instructs the steel contractor to move forward with revised shop drawings.
- 28: The steel contractor moves ahead with revised drawings. Since design is still trying to catch up, they make many assumptions that they expect the GC to adhere to. The pressure continues mounting and relationships are becoming strained. Finally, the steel contractor sends the drawings back to the GC.
- 29: This is the original date that steel was required to be onsite. The GC committed to this date. It fly's by and the pressure spikes.
- 30: Once again, in the heat of the battle, the GC performs little to no internal review before submitting to the engineer.
- 31: The GC submits again, with a demand for expedited review. The GC explains that this package is now the hottest item on their desk and it is destroying the schedule. Tempers flare as the engineer tells the GC that it is not their fault and they need time to review without the constant pressure of "everything will be late if you don't hurry".
- 32: Once again, the GC recieves a "Revise and Resubmit" response. About this time, the GC is feeling like the process is hopeless. It seems there are more notations that the first round. Now angry, the GC sends the set back to the steel contractor and blows up. The steel contractor had already communicated that the fabrication window they had reserved was gone and due their current workload, they would have to fit the GC's project in where they could. This simly meant that the steel sub was experiencing the same issues across their other projects with other GC's and they would figure it out when the time came. Still, the pressure is intense now and every day lost is felt by everyone.
- 33: The steel contactor turns the revised drawings around in 10 days and the GC submits again.
- 34: The GC submits again, with an expedited review request.
- 36: The engineer, in spite of finding more problems, finally approves but the approval is "Approved as Noted". It should have been "Revise and Resubmit" but at some point, the project needs to move forward. Further risk is transferred back to the GC and steel
- 37: The GC sends the drawings back to the steel subcontractor with an urgent message to start fabrication now!
- 38: Shockingly, the steel contractor is able to get to work immediately and tells the GC that they can honor their original, 45-day, fabrication duration. They push ahead and try to capture all the changes that came back noted. The GC has not had the time to coordinate all of the changes in the field, and frankly, doesn't understand the impacts. They move ahead with work in the field based on the "latest" shop drawings.
- 40: Steel FINALLY arrives onsite. The steel crews mobilize and get to work. Soon, everything stops. The GC and the steel contractor find immediate problems with things like embeds not matching base plates, steel alignment issues, beams that are too long, posts that are too short. This is when the real problems start and the team explodes. The GC wants to blame the steel contractor but the steel contractor pushes back with "We did waht you tolsd us to do". Then, the engineers get involved because the GC tries to figure out solutions thst do not involve sending the steel package bcak to the shop for another round of changes. Problems compound on top of each other, fast. This is just the beginning.

| ID | WBS | Task | Type | Duration | Start | Finish | Predecessors | Total slack | 3 Week Look-Ahead | 6 Week Look-Ahead | 12 Week Look-Ahead | Field |
| --- | --- | --- | --- | --- | --- | --- | --- | --- | --- | --- | --- | --- |
| 49 | 3.27 | **Structural Steel Procurement** |  | 199d | 2026-04-30 | 2027-02-02 |  | 0d | 1 | 1 | 1 | 1 |
| 50 | 3.27.1 | Commitment Buyout |  | 20d | 2026-04-30 | 2026-05-27 |  | 0d | 1 | 1 | 1 | 1 |
| 51 | 3.27.2 | Submittal Prep - Trade Partner and GC Working Together to Develop Submittal Information |  | 45d | 2026-05-28 | 2026-07-29 | 50 | 0d | 1 | 1 | 1 | 1 |
| 52 | 3.27.3 | GC Receives Submittal from Trade Partner |  | 1d | 2026-07-30 | 2026-07-30 | 51 | 0d | 1 | 1 | 1 | 1 |
| 53 | 3.27.4 | GC Submittal Review for Compliance |  | 7d | 2026-07-31 | 2026-08-10 | 52 | 0d | 1 | 1 | 1 | 1 |
| 54 | 3.27.5 | Parallel, Multidisciplinary Review |  | 7d | 2026-08-07 | 2026-08-17 | 53SS+5d | 0d | 1 | 1 | 1 | 1 |
| 55 | 3.27.6 | GC Submits to Reviewer/Approver |  | 1d | 2026-08-18 | 2026-08-18 | 53, 54 | 0d | 1 | 1 | 1 | 1 |
| 56 | 3.27.7 | Reviewer/Approver Review |  | 15d | 2026-08-19 | 2026-09-08 | 55 | 0d | 1 | 1 | 1 | 1 |
| 57 | 3.27.8 | Revise & Resubmit Response |  | 1d | 2026-09-09 | 2026-09-09 | 56 | 0d | 1 | 1 | 1 | 1 |
| 58 | 3.27.9 | Submitter Revisions |  | 15d | 2026-09-10 | 2026-09-30 | 57 | 0d | 1 | 1 | 1 | 1 |
| 59 | 3.27.10 | Trade Partner Resubmits to GC |  | 1d | 2026-10-01 | 2026-10-01 | 58 | 0d | 1 | 1 | 1 | 1 |
| 60 | 3.27.11 | GC Resubmits to Reviewer/Approver |  | 1d | 2026-10-02 | 2026-10-02 | 59 | 0d | 1 | 1 | 1 | 1 |
| 61 | 3.27.12 | REV 1 Reviewer/Approver Review |  | 10d | 2026-10-05 | 2026-10-16 | 60 | 0d | 1 | 1 | 1 | 1 |
| 62 | 3.27.13 | REV 1 Submittal - Revise & Resubmit |  | 1d | 2026-10-19 | 2026-10-19 | 61 | 0d | 1 | 1 | 1 | 1 |
| 63 | 3.27.14 | Submitter Preps REV 2 Submittal |  | 10d | 2026-10-20 | 2026-11-02 | 62 | 0d | 1 | 1 | 1 | 1 |
| 64 | 3.27.15 | Trade Partner Submits REV 2 to GC |  | 1d | 2026-11-03 | 2026-11-03 | 63 | 0d | 1 | 1 | 1 | 1 |
| 65 | 3.27.16 | GC Resubmits to Reviewer/Approver |  | 1d | 2026-11-04 | 2026-11-04 | 64 | 0d | 1 | 1 | 1 | 1 |
| 66 | 3.27.17 | REV 2 Reviewer/Approver Review |  | 7d | 2026-11-05 | 2026-11-13 | 65 | 0d | 1 | 1 | 1 | 1 |
| 67 | 3.27.18 | REV 2 Submittal - Approved |  | 1d | 2026-11-16 | 2026-11-16 | 66 | 0d | 1 | 1 | 1 | 1 |
| 68 | 3.27.19 | Procurement Authorized |  | 1d | 2026-11-17 | 2026-11-17 | 67 | 0d | 1 | 1 | 1 | 1 |
| 69 | 3.27.20 | Material/Product & Fabrication Lead-Time |  | 45d | 2026-11-18 | 2027-01-19 | 68 | 0d | 1 | 1 | 1 | 1 |
| 70 | 3.27.21 | Trucking/Shipping |  | 10d | 2027-01-20 | 2027-02-02 | 69 | 0d | 1 | 1 | 1 | 1 |
| 71 | 3.27.22 | Material/Product Arrives Onsite | milestone | 0d | 2027-02-02 | 2027-02-02 | 70 | 0d | 1 | 1 | 1 | 1 |
