| uid | id | name | wbs | outlineLevel | start | finish | durationMinutes | durationWorkingDays | isSummary | isCritical | notes | isMilestone |
| --- | --- | --- | --- | --- | --- | --- | --- | --- | --- | --- | --- | --- |
| 0 | 0 | reality | 0 | 0 | 2026-04-30T08:00:00 | 2027-02-02T17:00:00 | 95520 | 199 | True | True |  |  |
| 37 | 1 |  |  | 0 | 2026-04-30T08:00:00 | 2026-04-30T17:00:00 | 480 | 1 |  |  |  |  |
| 1 | 2 | "Happy Path" | 1 | 1 | 2026-04-30T08:00:00 | 2026-04-30T17:00:00 | 480 | 1 |  |  | The "Happy Path" is the procurement schedule that GC's commit to when they do not have clarity around constraints. This is simply one example of the many procurement items that make up every project. |  |
| 2 | 3 | Structural Steel Procurement | 2 | 1 | 2026-04-30T08:00:00 | 2026-10-07T17:00:00 | 55200 | 115 | True |  |  |  |
| 3 | 4 | Buyout - Submittal - Approval | 2.1 | 2 | 2026-04-30T08:00:00 | 2026-07-08T17:00:00 | 24000 | 50 |  |  | Contractor assumes that they can complete buyout in 5 days and then move the steel subcontractor into the shop drawing process, 30 days, and then 15 days for review and approval. |  |
| 39 | 5 | Fabrication Starts Here | 2.2 | 2 | 2026-07-08T17:00:00 | 2026-07-08T17:00:00 | 0 | 0 |  |  | Fabrication has to start today to meet the delivery date. Steel subcontractor blocks out their schedule for this project based on this date. | True |
| 4 | 6 | Fabrication - Delivery | 2.3 | 2 | 2026-07-09T08:00:00 | 2026-09-16T17:00:00 | 24000 | 50 |  |  | The steel subcontractor gave 45 days for the fabrication lead time and 5 days for delivery. |  |
| 6 | 7 | Buffer - For Good Measure | 2.4 | 2 | 2026-09-17T08:00:00 | 2026-10-07T17:00:00 | 7200 | 15 |  |  | Nothing ever goes according to plan so the GC adds 15 days, 3-weeks, as a buffer. This seems very reasonable but the owner pushes back and doesn't believe the buffer is warranted. |  |
| 5 | 8 | False Hope Delivery Date - 6/10/24 | 2.5 | 2 | 2026-10-07T17:00:00 | 2026-10-07T17:00:00 | 0 | 0 |  |  | Steel is required on site at an even earlier date, but the GC explains that this is the earliest they can get steel on site. The buffer question is raised again but the GC holds firm and thinks they are covered with 15 days. | True |
| 7 | 9 |  |  | 0 | 2026-04-30T08:00:00 | 2026-04-30T17:00:00 | 480 | 1 |  |  |  |  |
| 8 | 10 |  |  | 0 | 2026-04-30T08:00:00 | 2026-04-30T17:00:00 | 480 | 1 |  |  |  |  |
| 9 | 11 |  |  | 0 | 2026-04-30T08:00:00 | 2026-04-30T17:00:00 | 480 | 1 |  |  |  |  |
| 10 | 12 |  |  | 0 | 2026-04-30T08:00:00 | 2026-04-30T17:00:00 | 480 | 1 |  |  |  |  |
| 11 | 13 |  |  | 0 | 2026-04-30T08:00:00 | 2026-04-30T17:00:00 | 480 | 1 |  |  |  |  |
| 12 | 14 | What Really Happens | 2.6 | 2 | 2026-04-30T08:00:00 | 2026-04-30T17:00:00 | 480 | 1 |  |  | This is the procurement reality that many General Contractors find themselves in when they commit to aggressive construction schedules that sidestep real constraints and logic, as with the "Happy Path" schedule above. They think they can force things through a process but they fail to understand that when they compress procurement logic, large amounts of risk is introduced into the system. They almost always lose. |  |
| 13 | 15 | Structural Steel Procurement | 3 | 1 | 2026-04-30T08:00:00 | 2027-02-02T17:00:00 | 95520 | 199 | True | True |  |  |
| 14 | 16 | Issue Contract/PO | 3.1 | 2 | 2026-04-30T08:00:00 | 2026-05-27T17:00:00 | 9600 | 20 |  |  | Buyout takes 20 days, not the 5 assumed in the "Happy Plan" |  |
| 15 | 17 | Steel Contractor Has Questions | 3.2 | 2 | 2026-05-27T17:00:00 | 2026-05-27T17:00:00 | 0 | 0 |  |  | The steel contractor has a list of questions before they can start shop drawings | True |
| 36 | 18 | Forced Shop Drawing Start - Have to Push to Meet Deadlines | 3.3 | 2 | 2026-05-28T08:00:00 | 2026-07-08T17:00:00 | 14400 | 30 |  |  | To maintain schedule, the contractor instructs the steel contractor to push ahead and assures that questions will be answered later during, the review process. |  |
| 40 | 19 | Original Start of Fabrication Date | 3.4 | 2 | 2026-07-08T08:00:00 | 2026-07-08T08:00:00 | 0 | 0 |  |  | This is the date that the steel contractor needed to start fabrication to guarantee delivery by 10/7/26. Fabrication start date quietly slips by. | True |
| 16 | 20 | GC Receives Submittal from Trade Partner | 3.5 | 2 | 2026-07-09T08:00:00 | 2026-07-09T17:00:00 | 480 | 1 |  |  | Contractor receives shop drawings and gives a quick glance before submitting. |  |
| 17 | 21 | Expedited GC Review | 3.6 | 2 | 2026-07-10T08:00:00 | 2026-07-10T17:00:00 | 480 | 1 |  |  | Contractor completes hasty review before sending off to the structural engineer. |  |
| 18 | 22 | Abbreviated Parallel Multidisciplinary Review | 3.7 | 2 | 2026-07-20T08:00:00 | 2026-07-20T17:00:00 | 480 | 1 |  |  | Multidisciplinary reviews get skipped in favor of keeping the process moving quickly. |  |
| 19 | 23 | GC Submits to Structural Eng. W/ Request to Expedite Review | 3.8 | 2 | 2026-07-21T08:00:00 | 2026-07-21T17:00:00 | 480 | 1 |  |  |  |  |
| 20 | 24 | Reviewer/Approver Review | 3.9 | 2 | 2026-07-22T08:00:00 | 2026-08-11T17:00:00 | 7200 | 15 |  |  | GC submits with a demand for expedited review explain that the start of fabrication has already been missed. The structural engineer has 15 days for review, contractually, but the GC asks for a 10-day turnaround. Due to already being overloaded by previous demands for expedited reviews, the engineer is experiencing overload already. Not knowing what is truly important, the engineer promises to do the best that he can and ends up taking the full 15 days. |  |
| 21 | 25 | Revise & Resubmit Response | 3.10 | 2 | 2026-08-12T08:00:00 | 2026-08-12T17:00:00 | 480 | 1 |  |  | Much to the frustration of the GC, the submittal, they assumed would be returned as "Approved", or, "Approved as Noted", get returned as "Revise and Resubmit". It is obvious that the structural engineer really drilled in on the first 10-15 pages of the shop drawings and red-marked many conflicts and mistakes. After those initial pages, though, the notations decreased. In reality, the engineer, feeling the pressure to get the drawings off their desk, and growing increasingly frustrated with the lack of coordination, simply sent the drawings back for the steel subcontractor to fix everything before submitting again. Now, the GC sends the drawings back to the subcontractor with a fevered demand for a quick turn-around. |  |
| 22 | 26 | Steel Contractor Starts Revisions | 3.11 | 2 | 2026-08-13T08:00:00 | 2026-08-17T17:00:00 | 1440 | 3 |  |  | The steel contractor dives back into the drawings, feeling the heat, and quickly re-discovers the initial questions about design that they had before they started the process. They go back to the GC and demand that the GC run interference and help ge the questions resolved before they start making revisions. Tempers flare. The fabrication start date is long gone and it's become painfully obvious to everyone that the steel is going to be really late. |  |
| 38 | 27 | Design Questions Pile Up | 3.12 | 2 | 2026-08-18T08:00:00 | 2026-09-09T17:00:00 | 8160 | 17 |  |  | The steel contractor submits a lengthy list of RFI's and the GC quickly dumps them onto the design team. The Architect is involved because architecture directly interfaces with the structural steel. It turns out that the missing design for several of the rooms in the house needs to be completed before the Architect can comment on structural issues. The decision is made to push ahead and carefully plan the field work to match the steel, when it eventually shows up. The GC instructs the steel contractor to move forward with revised shop drawings. |  |
| 23 | 28 | Steel Contractor Pushes to Finalize Submittal | 3.13 | 2 | 2026-09-10T08:00:00 | 2026-10-07T17:00:00 | 9600 | 20 |  |  | The steel contractor moves ahead with revised drawings. Since design is still trying to catch up, they make many assumptions that they expect the GC to adhere to. The pressure continues mounting and relationships are becoming strained. Finally, the steel contractor sends the drawings back to the GC. |  |
| 41 | 29 | Original Steel Onsite Date | 3.14 | 2 | 2026-10-07T08:00:00 | 2026-10-07T08:00:00 | 0 | 0 |  |  | This is the original date that steel was required to be onsite. The GC committed to this date. It fly's by and the pressure spikes. | True |
| 24 | 30 | GC Resubmits to Reviewer/Approver | 3.15 | 2 | 2026-10-08T08:00:00 | 2026-10-08T17:00:00 | 480 | 1 |  |  | Once again, in the heat of the battle, the GC performs little to no internal review before submitting to the engineer. |  |
| 25 | 31 | REV 1 Reviewer/Approver Review | 3.16 | 2 | 2026-10-09T08:00:00 | 2026-10-22T17:00:00 | 4800 | 10 |  |  | The GC submits again, with a demand for expedited review. The GC explains that this package is now the hottest item on their desk and it is destroying the schedule. Tempers flare as the engineer tells the GC that it is not their fault and they need time to review without the constant pressure of "everything will be late if you don't hurry". |  |
| 26 | 32 | REV 1 Submittal - Revise & Resubmit | 3.17 | 2 | 2026-10-23T08:00:00 | 2026-10-23T17:00:00 | 480 | 1 |  |  | Once again, the GC recieves a "Revise and Resubmit" response. About this time, the GC is feeling like the process is hopeless. It seems there are more notations that the first round. Now angry, the GC sends the set back to the steel contractor and blows up. The steel contractor had already communicated that the fabrication window they had reserved was gone and due their current workload, they would have to fit the GC's project in where they could. This simly meant that the steel sub was experiencing the same issues across their other projects with other GC's and they would figure it out when the time came. Still, the pressure is intense now and every day lost is felt by everyone. |  |
| 27 | 33 | Submitter Preps REV 2 Submittal | 3.18 | 2 | 2026-10-26T08:00:00 | 2026-11-06T17:00:00 | 4800 | 10 |  |  | The steel contactor turns the revised drawings around in 10 days and the GC submits again. |  |
| 29 | 34 | GC Resubmits to Reviewer/Approver | 3.19 | 2 | 2026-11-09T08:00:00 | 2026-11-09T17:00:00 | 480 | 1 |  |  | The GC submits again, with an expedited review request. |  |
| 30 | 35 | REV 2 Reviewer/Approver Review | 3.20 | 2 | 2026-11-10T08:00:00 | 2026-11-18T17:00:00 | 3360 | 7 |  |  |  |  |
| 31 | 36 | REV 2 Submittal - Approved | 3.21 | 2 | 2026-11-19T08:00:00 | 2026-11-19T17:00:00 | 480 | 1 |  |  | The engineer, in spite of finding more problems, finally approves but the approval is "Approved as Noted". It should have been "Revise and Resubmit" but at some point, the project needs to move forward. Further risk is transferred back to the GC and steel |  |
| 32 | 37 | Procurement Authorized | 3.22 | 2 | 2026-11-20T08:00:00 | 2026-11-20T17:00:00 | 480 | 1 |  |  | The GC sends the drawings back to the steel subcontractor with an urgent message to start fabrication now! |  |
| 33 | 38 | Material/Product & Fabrication Lead-Time | 3.23 | 2 | 2026-11-23T08:00:00 | 2027-01-22T17:00:00 | 21600 | 45 |  |  | Shockingly, the steel contractor is able to get to work immediately and tells the GC that they can honor their original, 45-day, fabrication duration. They push ahead and try to capture all the changes that came back noted. The GC has not had the time to coordinate all of the changes in the field, and frankly, doesn't understand the impacts. They move ahead with work in the field based on the "latest" shop drawings. |  |
| 34 | 39 | Trucking/Shipping | 3.24 | 2 | 2027-01-25T08:00:00 | 2027-01-29T17:00:00 | 2400 | 5 |  |  |  |  |
| 35 | 40 | Material/Product Arrives Onsite | 3.25 | 2 | 2027-01-29T17:00:00 | 2027-01-29T17:00:00 | 0 | 0 |  |  | Steel FINALLY arrives onsite. The steel crews mobilize and get to work. Soon, everything stops. The GC and the steel contractor find immediate problems with things like embeds not matching base plates, steel alignment issues, beams that are too long, posts that are too short. This is when the real problems start and the team explodes. The GC wants to blame the steel contractor but the steel contractor pushes back with "We did waht you tolsd us to do". Then, the engineers get involved because the GC tries to figure out solutions thst do not involve sending the steel package bcak to the shop for another round of changes. Problems compound on top of each other, fast. This is just the beginning. | True |
| 42 | 41 |  |  | 0 | 2026-04-30T08:00:00 | 2026-04-30T17:00:00 | 480 | 1 |  |  |  |  |
| 43 | 42 |  |  | 0 | 2026-04-30T08:00:00 | 2026-04-30T17:00:00 | 480 | 1 |  |  |  |  |
| 44 | 43 |  |  | 0 | 2026-04-30T08:00:00 | 2026-04-30T17:00:00 | 480 | 1 |  |  |  |  |
| 45 | 44 |  |  | 0 | 2026-04-30T08:00:00 | 2026-04-30T17:00:00 | 480 | 1 |  |  |  |  |
| 46 | 45 |  |  | 0 | 2026-04-30T08:00:00 | 2026-04-30T17:00:00 | 480 | 1 |  |  |  |  |
| 47 | 46 |  |  | 0 | 2026-04-30T08:00:00 | 2026-04-30T17:00:00 | 480 | 1 |  |  |  |  |
| 48 | 47 |  |  | 0 | 2026-04-30T08:00:00 | 2026-04-30T17:00:00 | 480 | 1 |  |  |  |  |
| 49 | 48 | What Should Happen | 3.26 | 2 | 2026-04-30T08:00:00 | 2026-04-30T17:00:00 | 480 | 1 |  |  |  |  |
| 50 | 49 | Structural Steel Procurement | 3.27 | 2 | 2026-04-30T08:00:00 | 2027-02-02T17:00:00 | 95520 | 199 | True | True |  |  |
| 51 | 50 | Commitment Buyout | 3.27.1 | 3 | 2026-04-30T08:00:00 | 2026-05-27T17:00:00 | 9600 | 20 |  | True |  |  |
| 52 | 51 | Submittal Prep - Trade Partner and GC Working Together to Develop Submittal Information | 3.27.2 | 3 | 2026-05-28T08:00:00 | 2026-07-29T17:00:00 | 21600 | 45 |  | True |  |  |
| 53 | 52 | GC Receives Submittal from Trade Partner | 3.27.3 | 3 | 2026-07-30T08:00:00 | 2026-07-30T17:00:00 | 480 | 1 |  | True |  |  |
| 54 | 53 | GC Submittal Review for Compliance | 3.27.4 | 3 | 2026-07-31T08:00:00 | 2026-08-10T17:00:00 | 3360 | 7 |  | True |  |  |
| 55 | 54 | Parallel, Multidisciplinary Review | 3.27.5 | 3 | 2026-08-07T08:00:00 | 2026-08-17T17:00:00 | 3360 | 7 |  | True |  |  |
| 56 | 55 | GC Submits to Reviewer/Approver | 3.27.6 | 3 | 2026-08-18T08:00:00 | 2026-08-18T17:00:00 | 480 | 1 |  | True |  |  |
| 57 | 56 | Reviewer/Approver Review | 3.27.7 | 3 | 2026-08-19T08:00:00 | 2026-09-08T17:00:00 | 7200 | 15 |  | True |  |  |
| 58 | 57 | Revise & Resubmit Response | 3.27.8 | 3 | 2026-09-09T08:00:00 | 2026-09-09T17:00:00 | 480 | 1 |  | True |  |  |
| 59 | 58 | Submitter Revisions | 3.27.9 | 3 | 2026-09-10T08:00:00 | 2026-09-30T17:00:00 | 7200 | 15 |  | True |  |  |
| 60 | 59 | Trade Partner Resubmits to GC | 3.27.10 | 3 | 2026-10-01T08:00:00 | 2026-10-01T17:00:00 | 480 | 1 |  | True |  |  |
| 61 | 60 | GC Resubmits to Reviewer/Approver | 3.27.11 | 3 | 2026-10-02T08:00:00 | 2026-10-02T17:00:00 | 480 | 1 |  | True |  |  |
| 62 | 61 | REV 1 Reviewer/Approver Review | 3.27.12 | 3 | 2026-10-05T08:00:00 | 2026-10-16T17:00:00 | 4800 | 10 |  | True |  |  |
| 63 | 62 | REV 1 Submittal - Revise & Resubmit | 3.27.13 | 3 | 2026-10-19T08:00:00 | 2026-10-19T17:00:00 | 480 | 1 |  | True |  |  |
| 64 | 63 | Submitter Preps REV 2 Submittal | 3.27.14 | 3 | 2026-10-20T08:00:00 | 2026-11-02T17:00:00 | 4800 | 10 |  | True |  |  |
| 65 | 64 | Trade Partner Submits REV 2 to GC | 3.27.15 | 3 | 2026-11-03T08:00:00 | 2026-11-03T17:00:00 | 480 | 1 |  | True |  |  |
| 66 | 65 | GC Resubmits to Reviewer/Approver | 3.27.16 | 3 | 2026-11-04T08:00:00 | 2026-11-04T17:00:00 | 480 | 1 |  | True |  |  |
| 67 | 66 | REV 2 Reviewer/Approver Review | 3.27.17 | 3 | 2026-11-05T08:00:00 | 2026-11-13T17:00:00 | 3360 | 7 |  | True |  |  |
| 68 | 67 | REV 2 Submittal - Approved | 3.27.18 | 3 | 2026-11-16T08:00:00 | 2026-11-16T17:00:00 | 480 | 1 |  | True |  |  |
| 69 | 68 | Procurement Authorized | 3.27.19 | 3 | 2026-11-17T08:00:00 | 2026-11-17T17:00:00 | 480 | 1 |  | True |  |  |
| 70 | 69 | Material/Product & Fabrication Lead-Time | 3.27.20 | 3 | 2026-11-18T08:00:00 | 2027-01-19T17:00:00 | 21600 | 45 |  | True |  |  |

| uid | id | name | wbs | outlineLevel | start | finish | durationMinutes | durationWorkingDays | isCritical | isMilestone |
| --- | --- | --- | --- | --- | --- | --- | --- | --- | --- | --- |
| 71 | 70 | Trucking/Shipping | 3.27.21 | 3 | 2027-01-20T08:00:00 | 2027-02-02T17:00:00 | 4800 | 10 | True |  |
| 72 | 71 | Material/Product Arrives Onsite | 3.27.22 | 3 | 2027-02-02T17:00:00 | 2027-02-02T17:00:00 | 0 | 0 | True | True |
